# Project Management Workploan

Schedule from MS Project XML, 2004-04-12 to 2004-07-30.

## Calendars

- Standard: Mon-Fri 08:00-12:00, 13:00-17:00; Sat-Sun off.
- : Mon-Fri 08:00-12:00, 13:00-17:00; Sat-Sun off.
- : Mon-Fri 08:00-12:00, 13:00-17:00; Sat-Sun off.
- : Mon-Fri 08:00-12:00, 13:00-17:00; Sat-Sun off.
- : Mon-Fri 08:00-12:00, 13:00-17:00; Sat-Sun off.

## Resources

| Resource |
| --- |
| Niet toegekend |

## Schedule

| ID | WBS | Task | Duration | Start | Finish | Predecessors | Total slack | Free slack | Text3 | Text4 | Text5 |
| --- | --- | --- | --- | --- | --- | --- | --- | --- | --- | --- | --- |
| 1 | 1 | **Primary Market Research Schedule** | 79.5d | 2004-04-12 | 2004-07-30 |  | 0d |  |  |  |  |
| 2 | 2 | **Initiation Phase** | 13d | 2004-04-12 | 2004-04-28 |  | 6650d | 0d | Mfg and Tech | Internal Mfg | Guadalajara |
| 3 | 1.1.1 | **Requirements Gathering & Analysis** | 4d | 2004-04-12 | 2004-04-15 |  | 7550d | 0d |  |  |  |
| 4 | 1.1.1.1 | Define process for gathering requirements | 1d | 2004-04-12 | 2004-04-12 |  | 0d |  |  |  |  |
| 5 | 1.1.1.2 | Document project-stakeholder interviews | 1d | 2004-04-13 | 2004-04-13 | 4 | 0d |  |  |  |  |
| 6 | 1.1.1.3 | Analyze requirements | 1d | 2004-04-14 | 2004-04-14 | 5 | 0d |  |  |  |  |
| 7 | 1.1.1.4 | Create requirements document | 1d | 2004-04-15 | 2004-04-15 | 6 | 7550d | 0d |  |  |  |
| 8 | 7 | **Project Charter Development** | 10d | 2004-04-15 | 2004-04-28 |  | 6650d | 0d | Mfg and Tech | Internal Mfg | Guadalajara |
| 9 | 1.1.2.1 | **Business Case** | 2d | 2004-04-15 | 2004-04-16 |  | 7450d | 0d |  |  |  |
| 10 | 1.1.2.1.1 | Document summary of business purpose justification | 2d | 2004-04-15 | 2004-04-16 | 6 | 7450d | 0d |  |  |  |
| 11 | 1.1.2.1.2 | Define expected benefits | 2d | 2004-04-15 | 2004-04-16 | 6 | 0d |  |  |  |  |
| 12 | 1.1.2.2 | **Project Scope Definition (High Level)** | 5d | 2004-04-19 | 2004-04-23 |  | 6950d | 0d |  |  |  |
| 13 | 1.1.2.2.1 | Define primary market research objectives | 3d | 2004-04-19 | 2004-04-21 | 11 | 0d |  |  |  |  |
| 14 | 1.1.2.2.2 | Define primary market research deliverables | 2d | 2004-04-22 | 2004-04-23 | 13 | 6950d | 0d |  |  |  |
| 15 | 1.1.2.2.3 | Identify specific exclusions to scope | 2d | 2004-04-22 | 2004-04-23 | 13 | 0d |  |  |  |  |
| 16 | 1.1.2.3 | Establish high-level time, cost, and resource estimates | 2d | 2004-04-26 | 2004-04-27 | 15 | 6750d | 0d |  |  |  |
| 17 | 1.1.2.4 | Establish list of key stakeholders | 2d | 2004-04-26 | 2004-04-27 | 15 | 0d |  |  |  |  |
| 18 | 1.1.2.5 | Document project charter | 1d | 2004-04-28 | 2004-04-28 | 17 | 0d |  |  |  |  |
| 19 | 1.1.2.6 | Project Charter Approval | 0d | 2004-04-28 | 2004-04-28 | 18 | 0d |  | Mfg and Tech | Internal Mfg | Guadalajara |
| 20 | 1.1.3 | Initiation Phase Approval | 0d | 2004-04-28 | 2004-04-28 | 19 | 0d |  |  |  |  |
| 22 | 1.2 | **Planning Phase** | 32.5d | 2004-04-29 | 2004-06-14 |  | 3400d | 0d | Mfg and Tech | Internal Mfg | Guadalajara |
| 23 | 1.2.1 | **Project Plan Development** | 32.5d | 2004-04-29 | 2004-06-14 | 20 | 3400d | 0d |  |  |  |
| 24 | 1.2.1.1 | **Scope Statement** | 4d | 2004-04-29 | 2004-05-04 |  | 2050d | 0d |  |  |  |
| 25 | 1.2.1.1.1 | Create scope description (based on business objectives) | 2d | 2004-04-29 | 2004-04-30 | 20 | 2250d | 0d |  |  |  |
| 26 | 1.2.1.1.2 | Define scope boundaries (both in and out of scope) | 2d | 2004-04-29 | 2004-04-30 | 20 | 0d |  |  |  |  |
| 27 | 1.2.1.1.3 | Define key project deliverables (including user-acceptable criteria) | 2d | 2004-05-03 | 2004-05-04 | 26 | 0d |  |  |  |  |

Notes:
- 2: Note: This template is for illustration purposes only. In the real world, project phases often overlap each other during the closedown of one phase and preparation for the next phase.
- 8: A Charter: (1) helps Management understand what the project will deliver, its business justification, and a high level estimation of the time, cost and resources required (2) serves as a commitment by Management to dedicate the time and resources necessary to prepare a more detailed, written "Project Plan" for formal funding approval; (3) should be relatively brief -- averaging around 3-5 pages in length. Note: Too much detail in the Charter can detract from a clear, concise business reason why Management should allow a project to go beyond the "Initiating" phase. There are also many unknowns at this stage of the ballgame that can make detailed time, cost and resource projections very risky. Projections in too much detail early on can contribute to serious cost and schedule overruns later in the project.
- 23: A written "Project Plan" (not a work plan schedule): (1) is a formal, approved document used to manage and control project execution (2) provides a detailed review of project time, cost, scope, resources, risk and other controls necessary for Management to approve all required funding and staffing (3)is expected to change over time as more accurate information becomes available; hence, the importance of change control. The Project Charter, which becomes part of the overall Project Plan, should remain relatively stable over time, and serve as Management's reference guide as to why the project exists.

| ID | WBS | Task | Duration | Start | Finish | Predecessors | Total slack | Free slack |
| --- | --- | --- | --- | --- | --- | --- | --- | --- |
| 28 | 1.2.1.2 | **Work Breakdown Structure (WBS)** | 4d | 2004-05-05 | 2004-05-10 |  | 0d |  |
| 29 | 1.2.1.2.1 | Create WBS to work-level execution | 2d | 2004-05-05 | 2004-05-06 | 27 | 0d |  |
| 30 | 1.2.1.2.2 | Define task dependencies (including predecessors/successors) | 2d | 2004-05-07 | 2004-05-10 | 29 | 0d |  |
| 31 | 1.2.1.3 | **Performance Baseline Measurement** | 2d | 2004-05-11 | 2004-05-12 |  | 5650d | 0d |
| 32 | 1.2.1.3.1 | Create schedule baseline (with expected resource effort) | 1d | 2004-05-11 | 2004-05-11 | 30 | 0d |  |
| 33 | 1.2.1.3.2 | Define budget baseline (with schedule and cost assumptions) | 1d | 2004-05-12 | 2004-05-12 | 32 | 5650d | 0d |
| 34 | 1.2.1.3.3 | Establish baseline tolerance thresholds (trigger change control) | 1d | 2004-05-12 | 2004-05-12 | 32 | 0d |  |
| 35 | 1.2.1.4 | **Procurement Planning (Research Vendor Selection)** | 8d | 2004-05-05 | 2004-05-14 |  | 2050d | 0d |
| 36 | 1.2.1.4.1 | Analyze market conditions | 1d | 2004-05-05 | 2004-05-05 | 24 | 2050d | 0d |
| 37 | 1.2.1.4.2 | Analyze make-or-buy findings | 2d | 2004-05-06 | 2004-05-07 | 36 | 2050d | 0d |
| 38 | 1.2.1.4.3 | Select contract type | 1d | 2004-05-10 | 2004-05-10 | 37 | 2050d | 0d |
| 39 | 1.2.1.4.4 | Develop procurement management plan | 2d | 2004-05-11 | 2004-05-12 | 38 | 2050d | 0d |
| 40 | 1.2.1.4.5 | Develop statement of work | 2d | 2004-05-13 | 2004-05-14 | 39 | 2050d | 0d |
| 41 | 1.2.1.5 | **Project Schedule Plan** | 2.5d | 2004-05-13 | 2004-05-17 |  | 5400d | 0d |
| 42 | 1.2.1.5.1 | **Project Milestones (PMs)** | 0.5d | 2004-05-13 | 2004-05-13 |  | 0d |  |
| 43 | 1.2.1.5.1.1 | Define major milestones (alignment with deliverables) | 0.5d | 2004-05-13 | 2004-05-13 | 34 | 0d |  |
| 44 | 1.2.1.5.2 | **Project Scheduling Work Plan** | 2d | 2004-05-13 | 2004-05-17 |  | 5400d | 0d |
| 45 | 1.2.1.5.2.1 | Define standard PM and approval gates | 0.5d | 2004-05-13 | 2004-05-13 | 43 | 5550d | 0d |
| 46 | 1.2.1.5.2.2 | Document WBS, milestones, and deliverables (dates and resourcing) | 2d | 2004-05-13 | 2004-05-17 | 43 | 5400d | 0d |
| 47 | 1.2.1.5.2.3 | Document schedule baseline | 1d | 2004-05-13 | 2004-05-14 | 43 | 0d |  |
| 48 | 1.2.1.6 | **Resource Management** | 2d | 2004-05-14 | 2004-05-18 |  | 5300d | 0d |
| 49 | 1.2.1.6.1 | Name project team members (with roles and responsibilities) | 2d | 2004-05-14 | 2004-05-18 | 47 | 5300d | 0d |
| 50 | 1.2.1.6.2 | Define all project stakeholders (with roles and project team liaison) | 2d | 2004-05-14 | 2004-05-18 | 47 | 5300d | 0d |
| 51 | 1.2.1.6.3 | Create org chart: project team, sponsor, steering committee, stakeholders | 2d | 2004-05-14 | 2004-05-18 | 47 | 0d |  |

Notes:
- 29: WBS can ideally be completed at the fourth level of breakdown, but should not exceed five levels.
- 32: Base the schedule baseline on the time and resource effort needed to achieve project milestones and deliverables. A formal change control should be applied with a pre-determined threshold limit (e.g., 10% over original estimate requires formal Management approval before a new baseline can be established).
- 33: The Budget Baseline should be driven by the Schedule and other cost assumptions. A pre-determined threshold limit should also be defined (e.g., 10% over the original Budget requires formal Management approval before the new Baseline is allowed).
- 42: Recommend not more than 10 to 15 major milestones per project with an average duration of 60 days or less per milestone.

| ID | WBS | Task | Duration | Start | Finish | Predecessors | Total slack | Free slack | Text3 | Text4 | Text5 | Text1 |
| --- | --- | --- | --- | --- | --- | --- | --- | --- | --- | --- | --- | --- |
| 52 | 1.2.1.7 | **Supporting PM Process Plans** | 19d | 2004-05-18 | 2004-06-14 |  | 3400d | 0d |  |  |  |  |
| 53 | 1.2.1.7.1 | **Change Management** | 4d | 2004-05-18 | 2004-05-24 |  | 4900d | 0d |  |  |  |  |
| 54 | 1.2.1.7.1.1 | Document change control procedure for budget and schedule baselines | 2d | 2004-05-18 | 2004-05-20 | 51 | 5100d | 0d |  |  |  |  |
| 55 | 1.2.1.7.1.2 | Document change control for approved scope baseline | 2d | 2004-05-18 | 2004-05-20 | 51 | 0d |  |  |  |  |  |
| 56 | 1.2.1.7.1.3 | Document change control for systems modifications | 2d | 2004-05-20 | 2004-05-24 | 55 | 0d |  |  |  |  |  |
| 57 | 1.2.1.7.2 | **Risk Management** | 4d | 2004-05-24 | 2004-05-28 |  | 0d |  |  |  |  |  |
| 58 | 1.2.1.7.2.1 | Document risk process: prioritization, mitigation, and contingency guidelines | 2d | 2004-05-24 | 2004-05-26 | 56 | 0d |  |  |  |  |  |
| 59 | 1.2.1.7.2.2 | Document risk assessment for scope, budget, and schedule baselines | 2d | 2004-05-26 | 2004-05-28 | 58 | 0d |  |  |  |  |  |
| 60 | 1.2.1.7.3 | **Issues Management** | 2d | 2004-05-28 | 2004-06-01 |  | 4300d | 0d |  |  |  |  |
| 61 | 1.2.1.7.3.1 | Document issues process: prioritization, resolution, and tracking guidelines | 2d | 2004-05-28 | 2004-06-01 | 59 | 4300d | 0d |  |  |  |  |
| 62 | 1.2.1.7.3.2 | Document formal 3-tiered escalation: project manager, sponsor, and executives | 2d | 2004-05-28 | 2004-06-01 | 59 | 0d |  |  |  |  |  |
| 63 | 1.2.1.7.4 | **Communication Plan** | 4d | 2004-06-01 | 2004-06-07 |  | 3900d | 0d |  |  |  |  |
| 64 | 1.2.1.7.4.1 | Document guidelines: project updates and stakeholder collaboration | 2d | 2004-06-01 | 2004-06-03 | 62 | 0d |  |  |  |  |  |
| 65 | 1.2.1.7.4.2 | Document guidelines for document repository access and controls | 2d | 2004-06-01 | 2004-06-03 | 62 | 4100d | 0d |  |  |  |  |
| 66 | 1.2.1.7.4.3 | Document standard project team and executive status report guidelines | 2d | 2004-06-03 | 2004-06-07 | 64 | 0d |  |  |  |  |  |
| 67 | 1.2.1.7.5 | **Quality Assurance and Control Plan** | 2d | 2004-06-07 | 2004-06-09 |  | 3700d | 0d |  |  |  |  |
| 68 | 1.2.1.7.5.1 | Define criteria for user-acceptance testing (with checklist) | 2d | 2004-06-07 | 2004-06-09 | 66 | 3700d | 0d |  |  |  |  |
| 69 | 1.2.1.7.5.2 | Define criteria for cost/benefit analysis | 2d | 2004-06-07 | 2004-06-09 | 66 | 3700d | 0d |  |  |  |  |
| 70 | 1.2.1.7.5.3 | Define criteria and process for periodic stakeholder satisfaction survey | 2d | 2004-06-07 | 2004-06-09 | 66 | 3700d | 0d |  |  |  |  |
| 71 | 1.2.1.7.5.4 | Define criteria for "Lessons Learned" (during closeout) | 2d | 2004-06-07 | 2004-06-09 | 66 | 0d |  |  |  |  |  |
| 72 | 1.2.1.7.6 | Create Draft Project Plan | 3d | 2004-06-09 | 2004-06-14 | 71 | 0d |  |  |  |  |  |
| 73 | 1.2.1.8 | Project Plan Approval | 0d | 2004-06-14 | 2004-06-14 | 72 | 0d |  | Mfg and Tech | Internal Mfg | Guadalajara |  |
| 74 | 1.2.2 | Planning Phase Approval | 0d | 2004-06-14 | 2004-06-14 | 73 | 0d |  |  |  |  |  |
| 76 | 1.3 | **Execution Phase** | 31d | 2004-06-14 | 2004-07-27 |  | 0d |  | Mfg and Tech | Internal Mfg | Guadalajara |  |
| 77 | 1.3.1 | **Brainstorming Marketing Idea** | 31d | 2004-06-14 | 2004-07-27 |  | 0d |  |  |  |  | MSP 2000 PLAN |
| 78 | 1.3.1.1 | **Prep Work** | 3.25d | 2004-06-14 | 2004-06-17 |  | 375d | 0d |  |  |  |  |
| 79 | 1.3.1.1.1 | Define objectives | 1d | 2004-06-14 | 2004-06-15 | 74 | 375d | 0d |  |  |  |  |
| 80 | 1.3.1.1.2 | Identify brainstorming team | 0.5d | 2004-06-15 | 2004-06-15 | 79 | 375d | 0d |  |  |  |  |
| 81 | 1.3.1.1.3 | Identify location | 0.25d | 2004-06-16 | 2004-06-16 | 80 | 375d | 0d |  |  |  |  |
| 82 | 1.3.1.1.4 | Develop agenda | 1d | 2004-06-16 | 2004-06-17 | 81 | 375d | 0d |  |  |  |  |
| 83 | 1.3.1.1.5 | Schedule facility | 0.25d | 2004-06-17 | 2004-06-17 | 82 | 375d | 0d |  |  |  |  |
| 84 | 1.3.1.1.6 | Arrange facilitator | 0.25d | 2004-06-17 | 2004-06-17 | 83 | 375d | 0d |  |  |  |  |

| ID | WBS | Task | Duration | Start | Finish | Predecessors | Total slack | Free slack | Text3 | Text4 | Text5 |
| --- | --- | --- | --- | --- | --- | --- | --- | --- | --- | --- | --- |
| 85 | 1.3.1.2 | **Brainstorming Session** | 5d | 2004-06-24 | 2004-07-01 |  | 375d | 0d |  |  |  |
| 86 | 1.3.1.2.1 | Analyze market condition | 0.5d | 2004-06-24 | 2004-06-25 | 84FS+40h | 375d | 0d |  |  |  |
| 87 | 1.3.1.2.2 | Identify risks | 1d | 2004-06-25 | 2004-06-28 | 86 | 375d | 0d |  |  |  |
| 88 | 1.3.1.2.3 | Select primary market research tool | 0.5d | 2004-06-28 | 2004-06-28 | 87 | 375d | 0d |  |  |  |
| 89 | 1.3.1.2.4 | Gather ideas | 1d | 2004-06-28 | 2004-06-29 | 88 | 375d | 0d |  |  |  |
| 90 | 1.3.1.2.5 | Analyze ideas | 0.5d | 2004-06-29 | 2004-06-30 | 89 | 375d | 0d |  |  |  |
| 91 | 1.3.1.2.6 | Develop research brief | 1d | 2004-06-30 | 2004-07-01 | 90 | 375d | 0d |  |  |  |
| 92 | 1.3.1.2.7 | Present to management | 0.5d | 2004-07-01 | 2004-07-01 | 91 | 375d | 0d |  |  |  |
| 93 | 1.3.1.3 | **Solicitation** | 12d | 2004-06-14 | 2004-06-30 |  | 0d |  |  |  |  |
| 94 | 1.3.1.3.1 | Define evaluation criteria | 1d | 2004-06-14 | 2004-06-15 | 40, 74 | 0d |  |  |  |  |
| 95 | 1.3.1.3.2 | Advertise Scope of Work (SOW) | 1d | 2004-06-15 | 2004-06-16 | 94 | 0d |  |  |  |  |
| 96 | 1.3.1.3.3 | Collect Proposals | 0d | 2004-06-30 | 2004-06-30 | 95FS+80h | 0d |  |  |  |  |
| 97 | 1.3.1.4 | **Source Selection (Research Vendor Selection)** | 5d | 2004-06-30 | 2004-07-07 |  | 0d |  |  |  |  |
| 98 | 1.3.1.4.1 | Evaluate proposals | 2d | 2004-06-30 | 2004-07-02 | 96 | 0d |  |  |  |  |
| 99 | 1.3.1.4.2 | Screen vendors | 2d | 2004-07-02 | 2004-07-06 | 98 | 0d |  |  |  |  |
| 100 | 1.3.1.4.3 | Negotiate contract | 1d | 2004-07-06 | 2004-07-07 | 99 | 0d |  |  |  |  |
| 101 | 1.3.1.4.4 | Select Vendor | 0d | 2004-07-07 | 2004-07-07 | 100 | 0d |  |  |  |  |
| 102 | 1.3.1.5 | **Primary Market Research Tool Development** | 14d | 2004-07-07 | 2004-07-27 |  | 0d |  |  |  |  |
| 103 | 1.3.1.5.1 | Identify method of survey (phone, in-person, Internet, magazines, etc.) | 1d | 2004-07-07 | 2004-07-08 | 101, 92 | 0d |  |  |  |  |
| 104 | 1.3.1.5.2 | Identify minimum number of samples | 0.5d | 2004-07-08 | 2004-07-08 | 103 | 0d |  |  |  |  |
| 105 | 1.3.1.5.3 | Identify test market | 1d | 2004-07-09 | 2004-07-09 | 104 | 0d |  |  |  |  |
| 106 | 1.3.1.5.4 | Identify demographics | 0.5d | 2004-07-12 | 2004-07-12 | 105 | 0d |  |  |  |  |
| 107 | 1.3.1.5.5 | Define questionnaire | 2d | 2004-07-12 | 2004-07-14 | 106 | 0d |  |  |  |  |
| 108 | 1.3.1.5.6 | Conduct research | 5d | 2004-07-14 | 2004-07-21 | 107 | 0d |  |  |  |  |
| 109 | 1.3.1.5.7 | Compile results | 2d | 2004-07-21 | 2004-07-23 | 108 | 0d |  |  |  |  |
| 110 | 1.3.1.5.8 | Generate report | 1d | 2004-07-23 | 2004-07-26 | 109 | 0d |  |  |  |  |
| 111 | 1.3.1.5.9 | Present report | 1d | 2004-07-26 | 2004-07-27 | 110 | 0d |  |  |  |  |
| 112 | 1.3.2 | Execution Phase Gateway Approval | 0d | 2004-07-27 | 2004-07-27 | 77 | 0d |  | Mfg and Tech | Internal Mfg | Guadalajara |

| ID | WBS | Task | Duration | Start | Finish | Predecessors | Total slack | Free slack | Constraint | Text3 | Text4 | Text5 |
| --- | --- | --- | --- | --- | --- | --- | --- | --- | --- | --- | --- | --- |
| 114 | 1.4 | **Closeout Phase** | 3.5d | 2004-07-27 | 2004-07-30 |  | 0d |  | start no earlier than 2004-07-27 | Mfg and Tech | Internal Mfg | Guadalajara |
| 115 | 1.4.1 | Contract Closeout | 1d | 2004-07-27 | 2004-07-27 |  | 250d | 0d |  |  |  |  |
| 116 | 1.4.2 | Launch project "Lessons Learned" review | 2d | 2004-07-27 | 2004-07-29 | 112 | 0d |  |  |  |  |  |
| 117 | 1.4.3 | **Establish process for archiving project data** | 1d | 2004-07-27 | 2004-07-28 | 112 | 200d | 0d |  |  |  |  |
| 118 | 1.4.3.1 | Archive documents | 1d | 2004-07-27 | 2004-07-28 | 112 | 200d | 0d |  |  |  |  |
| 119 | 1.4.4 | Conduct administrative closeout | 1d | 2004-07-29 | 2004-07-30 | 112, 116 | 0d |  |  |  |  |  |
| 120 | 1.4.5 | Closeout Phase Approval | 0d | 2004-07-30 | 2004-07-30 | 119 | 0d |  |  |  |  |  |
