# Building Pentaho Solutions

Schedule from MS Project XML, 2008-11-26 to 2009-05-04, scheduled back from the finish.
Strukton

## Calendars

- Standaard: Mon-Fri 08:00-12:00, 13:00-17:00; Sat-Sun off.

## Resources

| Resource |
| --- |
| Jos |
| Roland |

## Schedule

| ID | WBS | Task | Duration | Start | Finish | Predecessors | Total slack | Free slack | Constraint | Resources | Work | Getal1 | Getal2 |
| --- | --- | --- | --- | --- | --- | --- | --- | --- | --- | --- | --- | --- | --- |
| 1 | 1 | Introduction | 5d | 2009-04-27 | 2009-05-01 | 8, 24, 28, 32, 3 | 1d |  |  | Roland | 40h | 20 | 11,43 |
| 2 | 2 | **Part 1: The Pentaho Solution** | 114d | 2008-11-26 | 2009-05-04 |  | 0d |  | as late as possible |  | 232h | 75 | 42,86 |
| 3 | 2.1 | Quick Start: Pentaho PCI samples | 8d | 2009-04-15 | 2009-04-24 | 6 | 1d | 0d |  | Roland | 64h | 20 | 11,43 |
| 4 | 2.2 | Prerequisites | 5d | 2009-04-21 | 2009-04-27 | 30 | 0d |  |  | Jos | 40h | 10 | 5,71 |
| 5 | 2.3 | Setting up the basics | 5d | 2009-04-28 | 2009-05-04 | 4 | 0d |  |  | Jos | 40h | 10 | 5,71 |
| 6 | 2.4 | The Pentaho BI stack | 5d | 2009-04-08 | 2009-04-14 | 34 | 1d | 0d |  | Roland | 40h | 25 | 14,29 |
| 7 | 2.5 | Example Business Case: Video Rentals Incorporated | 6d | 2008-11-26 | 2008-12-03 |  | 0d |  |  | Jos | 48h | 10 | 5,71 |
| 8 | 3 | **Part 2: Building the Data Warehouse** | 52d | 2008-12-04 | 2009-02-13 |  | 0d |  | as late as possible |  | 648h | 140 | 80 |
| 9 | 3.1 | **Data warehouse primer** | 16d | 2008-12-04 | 2008-12-25 |  | 0d |  | as late as possible |  | 128h | 30 | 17,14 |
| 10 | 3.1.1 | Purpose of the datawarehouse | 6d | 2008-12-04 | 2008-12-11 | 7 | 5d | 0d |  | Jos | 48h | 10 | 5,71 |
| 11 | 3.1.2 | Data Warehouse architecture and components | 10d | 2008-12-12 | 2008-12-25 | 10 | 5d | 0d |  | Jos | 80h | 20 | 11,43 |
| 12 | 3.2 | Modeling the Business: Logical Design using Star Schemas | 15d | 2008-12-26 | 2009-01-15 | 11 | 5d | 0d |  | Jos | 120h | 30 | 17,14 |
| 13 | 3.3 | **The Data Mart Design Process** | 21d | 2009-01-16 | 2009-02-13 |  | 0d |  | as late as possible |  | 168h | 30 | 17,14 |
| 14 | 3.3.1 | Requirements analysis | 5d | 2009-01-16 | 2009-01-22 | 12 | 5d | 0d |  | Jos | 40h | 10 | 5,71 |
| 15 | 3.3.2 | Developing the model | 6d | 2009-01-23 | 2009-01-30 | 14 | 5d | 0d |  | Jos | 48h | 10 | 5,71 |
| 16 | 3.3.3 | From Logical to Physical Design | 10d | 2009-02-02 | 2009-02-13 | 15 | 5d |  |  | Jos | 80h | 10 | 5,71 |
| 17 | 3.4 | **Creating the ETL solution using Kettle** | 17d | 2008-12-04 | 2008-12-26 |  | 0d |  | as late as possible |  | 136h | 30 | 17,14 |
| 18 | 3.4.1 | Kettle overview | 3d | 2008-12-04 | 2008-12-08 | 7 | 0d |  |  | Roland | 24h | 5 | 2,86 |
| 19 | 3.4.2 | Setting up Kettle | 3d | 2008-12-09 | 2008-12-11 | 18 | 0d |  |  | Roland | 24h | 5 | 2,86 |
| 20 | 3.4.3 | Creating the ETL solution | 11d | 2008-12-12 | 2008-12-26 | 19 | 0d |  |  | Roland | 88h | 20 | 11,43 |
| 21 | 3.5 | **Deploying and monitoring the ETL Solution** | 12d | 2008-12-29 | 2009-01-13 |  | 0d |  | as late as possible |  | 96h | 20 | 11,43 |
| 22 | 3.5.1 | ETL deployment, scheduling and migration | 6d | 2008-12-29 | 2009-01-05 | 20 | 0d |  |  | Roland | 48h | 10 | 5,71 |
| 23 | 3.5.2 | Logging, auditing and trouble shooting | 6d | 2009-01-06 | 2009-01-13 | 22 | 0d |  |  | Roland | 48h | 10 | 5,71 |
| 24 | 4 | **Part 3: Reporting** | 42d | 2009-01-14 | 2009-03-12 |  | 0d |  | as late as possible |  | 336h | 90 | 51,43 |
| 25 | 4.1 | The meta data layer | 15d | 2009-01-14 | 2009-02-03 | 23 | 0d |  |  | Roland | 120h | 30 | 17,14 |
| 26 | 4.2 | Reporting using Jfree | 15d | 2009-02-20 | 2009-03-12 | 27 | 0d |  |  | Jos | 120h | 30 | 17,14 |
| 27 | 4.3 | Scheduling, Subscription and Bursting | 12d | 2009-02-04 | 2009-02-19 | 25 | 0d |  |  | Roland | 96h | 30 | 17,14 |

| ID | WBS | Task | Duration | Start | Finish | Predecessors | Total slack | Free slack | Constraint | Resources | Work | Getal1 | Getal2 |
| --- | --- | --- | --- | --- | --- | --- | --- | --- | --- | --- | --- | --- | --- |
| 28 | 5 | **Part 4: Analysis** | 42d | 2009-02-20 | 2009-04-20 | 8 | 0d |  | as late as possible |  | 336h | 90 | 51,43 |
| 29 | 5.1 | OLAP Solutions using Mondrian and JPivot | 15d | 2009-03-13 | 2009-04-02 | 26 | 0d |  |  | Jos | 120h | 30 | 17,14 |
| 30 | 5.2 | Data Mining using Weka | 12d | 2009-04-03 | 2009-04-20 | 29 | 0d |  |  | Jos | 96h | 30 | 17,14 |
| 31 | 5.3 | Building Dashboards | 15d | 2009-02-20 | 2009-03-12 | 27 | 1d | 0d |  | Roland | 120h | 30 | 17,14 |
| 32 | 6 | **Part 5: Customizing Pentaho** | 18d | 2009-03-13 | 2009-04-07 |  | 0d |  | as late as possible |  | 144h | 30 | 17,14 |
| 33 | 6.1 | Incorporating Alternative Tools for ETL and Reporting | 9d | 2009-03-13 | 2009-03-25 | 31 | 1d | 0d |  | Roland | 72h | 15 | 8,57 |
| 34 | 6.2 | Customizing the Solution | 9d | 2009-03-26 | 2009-04-07 | 33 | 1d | 0d |  | Roland | 72h | 15 | 8,57 |
